# LR1

How a schedule from MS Project changed from version to version. A marks actual dates.

## Version 1 (saved 2021-02-27)

Note of the change: Добавила вторую лабу

| ID | WBS | Task | Duration | Start | Finish | Predecessors | Total float |
| --- | --- | --- | --- | --- | --- | --- | --- |
| 1 |  | Начало проекта | 0w | 2021-03-01 | 2021-03-01 |  | 70d |
| 2 | 2 | **Создание интерфейса** | 120d | 2021-03-01 | 2021-08-19 | 1 | 0d |
| 3 | 2.1 | **Разработка дизайна интерфейса** | 25d | 2021-03-01 | 2021-04-05 |  | 80d |
| 4 |  | Разработка 2D графических элементов | 3w | 2021-03-01 | 2021-03-22 |  | 70d |
| 5 |  | Разработка 3D графических элементов | 2w | 2021-03-01 | 2021-03-15 | 4SS | 70d |
| 6 |  | Создание заставки | 3w | 2021-03-16 | 2021-04-05 | 5 | 70d |
| 7 |  | Программирование интерфейса | 3w | 2021-07-30 | 2021-08-19 | 3, 12 | 0d |
| 8 | 3 | **Построение базы объектов** | 85d | 2021-03-01 | 2021-07-01 |  | 65d |
| 9 |  | Анализ и построение структуры базы объектов | 2w | 2021-03-01 | 2021-03-15 |  | 53d |
| 10 |  | Программирование средств обработки базы объектов | 3w | 2021-03-16 | 2021-04-05 | 9 | 65d |
| 11 |  | Наполнение базы объектов | 12w | 2021-04-06 | 2021-07-01 | 10 | 65d |
| 12 | 4 | **Создание ядра GIS** | 105d | 2021-03-01 | 2021-07-29 |  | 0d |
| 13 |  | Анализ и проектирование ядра | 5w | 2021-03-01 | 2021-04-05 |  | 0d |
| 14 |  | Создание модели ядра | 5w | 2021-04-06 | 2021-05-12 | 13 | 0d |
| 15 |  | Тестирование модели ядра | 1w | 2021-05-13 | 2021-05-19 | 14 | 0d |
| 16 |  | Создание рабочей версии ядра | 10w | 2021-05-20 | 2021-07-29 | 15 | 0d |
| 17 |  | Создание мультимедиа – наполнения | 6w | 2021-04-06 | 2021-05-19 | 3 | 83d |
| 18 |  | Создание справочной системы | 2w | 2021-08-20 | 2021-09-02 | 7 | 20d |
| 19 | 7 | **Создание руководства пользователя** | 27d | 2021-08-06 | 2021-09-13 | 7FS-10d | 0d |
| 20 |  | Разработка дизайна руководства | 1w | 2021-08-06 | 2021-08-12 |  | 0d |
| 21 |  | Написание руководства пользователя | 3w | 2021-08-10 | 2021-09-13 | 20SS+2d | 0d |
| 22 | 8 | **Создание web – сайта и поддержка** | 23d | 2021-08-10 | 2021-09-09 |  | 0d |
| 23 |  | Разработка структуры сайта | 1d | 2021-08-10 | 2021-08-10 | 21SS | 0d |
| 24 |  | Разработка дизайна сайта | 1.4w | 2021-08-11 | 2021-08-19 | 23 | 0d |
| 25 |  | Наполнение сайта | 3w | 2021-08-20 | 2021-09-09 | 24 | 0d |
| 26 |  | Тестирование сайта | 4w | 2021-09-03 | 2021-09-30 | 22FS-1w | 0d |
| 27 |  | Сдача сайта в эксплуатацию | 0w | 2021-09-30 | 2021-09-30 | 26 | 0d |

## Version 2 (saved 2021-03-03)

Note of the change: изменила лабы в процессе сдачи

Last finish 2021-09-30 → 2021-09-14 (-16d).

Changed:

| ID | Task | Start | Finish | Duration | Total float |
| --- | --- | --- | --- | --- | --- |
| 2 | **Создание интерфейса** |  | 2021-08-19 → 2021-08-05 (-14d) | 120d → 110d |  |
| 7 | Программирование интерфейса | 2021-07-30 → 2021-07-16 (-14d) | 2021-08-19 → 2021-08-05 (-14d) |  |  |
| 12 | **Создание ядра GIS** |  | 2021-07-29 → 2021-07-15 (-14d) | 105d → 95d |  |
| 13 | Анализ и проектирование ядра |  | 2021-04-05 → 2021-03-22 (-14d) | 5w → 3w |  |
| 14 | Создание модели ядра | 2021-04-06 → 2021-03-23 (-14d) | 2021-05-12 → 2021-04-26 (-16d) |  |  |
| 15 | Тестирование модели ядра | 2021-05-13 → 2021-04-27 (-16d) | 2021-05-19 → 2021-05-04 (-15d) |  |  |
| 16 | Создание рабочей версии ядра | 2021-05-20 → 2021-05-05 (-15d) | 2021-07-29 → 2021-07-15 (-14d) |  |  |
| 18 | Создание справочной системы | 2021-08-20 → 2021-08-06 (-14d) | 2021-09-02 → 2021-08-19 (-14d) |  | 20d → 18d |
| 19 | **Создание руководства пользователя** | 2021-08-06 → 2021-07-23 (-14d) | 2021-09-13 → 2021-08-16 (-28d) | 27d → 17d |  |
| 20 | Разработка дизайна руководства | 2021-08-06 → 2021-07-23 (-14d) | 2021-08-12 → 2021-07-29 (-14d) |  |  |
| 21 | Написание руководства пользователя | 2021-08-10 → 2021-07-27 (-14d) | 2021-09-13 → 2021-08-16 (-28d) |  |  |
| 22 | **Создание web – сайта и поддержка** | 2021-08-10 → 2021-07-27 (-14d) | 2021-09-09 → 2021-08-24 (-16d) | 23d → 21d |  |
| 23 | Разработка структуры сайта | 2021-08-10 → 2021-07-27 (-14d) | 2021-08-10 → 2021-07-27 (-14d) |  |  |
| 24 | Разработка дизайна сайта | 2021-08-11 → 2021-07-28 (-14d) | 2021-08-19 → 2021-08-03 (-16d) | 1.4w → 1w |  |
| 25 | Наполнение сайта | 2021-08-20 → 2021-08-04 (-16d) | 2021-09-09 → 2021-08-24 (-16d) |  |  |
| 26 | Тестирование сайта | 2021-09-03 → 2021-08-18 (-16d) | 2021-09-30 → 2021-09-14 (-16d) |  |  |
| 27 | Сдача сайта в эксплуатацию | 2021-09-30 → 2021-09-14 (-16d) | 2021-09-30 → 2021-09-14 (-16d) |  |  |
