# LR1

How a schedule from MS Project changed from version to version. A marks actual dates.

## Version 1 (saved 2021-03-03)

Note of the change: изменила лабы в процессе сдачи

| ID | WBS | Task | Duration | Start | Finish | Predecessors | Total float |
| --- | --- | --- | --- | --- | --- | --- | --- |
| 1 |  | Начало проекта | 0w | 2021-03-01 | 2021-03-01 |  | 70d |
| 2 | 2 | **Создание интерфейса** | 110d | 2021-03-01 | 2021-08-05 | 1 | 0d |
| 3 | 2.1 | **Разработка дизайна интерфейса** | 25d | 2021-03-01 | 2021-04-05 |  | 70d |
| 4 |  | Разработка 2D графических элементов | 3w | 2021-03-01 | 2021-03-22 |  | 70d |
| 5 |  | Разработка 3D графических элементов | 2w | 2021-03-01 | 2021-03-15 | 4SS | 70d |
| 6 |  | Создание заставки | 3w | 2021-03-16 | 2021-04-05 | 5 | 70d |
| 7 |  | Программирование интерфейса | 3w | 2021-07-16 | 2021-08-05 | 3, 12 | 0d |
| 8 | 3 | **Построение базы объектов** | 85d | 2021-03-01 | 2021-07-01 |  | 53d |
| 9 |  | Анализ и построение структуры базы объектов | 2w | 2021-03-01 | 2021-03-15 |  | 53d |
| 10 |  | Программирование средств обработки базы объектов | 3w | 2021-03-16 | 2021-04-05 | 9 | 53d |
| 11 |  | Наполнение базы объектов | 12w | 2021-04-06 | 2021-07-01 | 10 | 53d |
| 12 | 4 | **Создание ядра GIS** | 95d | 2021-03-01 | 2021-07-15 |  | 0d |
| 13 |  | Анализ и проектирование ядра | 3w | 2021-03-01 | 2021-03-22 |  | 0d |
| 14 |  | Создание модели ядра | 5w | 2021-03-23 | 2021-04-26 | 13 | 0d |
| 15 |  | Тестирование модели ядра | 1w | 2021-04-27 | 2021-05-04 | 14 | 0d |
| 16 |  | Создание рабочей версии ядра | 10w | 2021-05-05 | 2021-07-15 | 15 | 0d |
| 17 |  | Создание мультимедиа – наполнения | 6w | 2021-04-06 | 2021-05-19 | 3 | 83d |
| 18 |  | Создание справочной системы | 2w | 2021-08-06 | 2021-08-19 | 7 | 18d |
| 19 | 7 | **Создание руководства пользователя** | 17d | 2021-07-23 | 2021-08-16 | 7FS-10d | 0d |
| 20 |  | Разработка дизайна руководства | 1w | 2021-07-23 | 2021-07-29 |  | 0d |
| 21 |  | Написание руководства пользователя | 3w | 2021-07-27 | 2021-08-16 | 20SS+2d | 0d |
| 22 | 8 | **Создание web – сайта и поддержка** | 21d | 2021-07-27 | 2021-08-24 |  | 0d |
| 23 |  | Разработка структуры сайта | 1d | 2021-07-27 | 2021-07-27 | 21SS | 0d |
| 24 |  | Разработка дизайна сайта | 1w | 2021-07-28 | 2021-08-03 | 23 | 0d |
| 25 |  | Наполнение сайта | 3w | 2021-08-04 | 2021-08-24 | 24 | 0d |
| 26 |  | Тестирование сайта | 4w | 2021-08-18 | 2021-09-14 | 22FS-1w | 0d |
| 27 |  | Сдача сайта в эксплуатацию | 0w | 2021-09-14 | 2021-09-14 | 26 | 0d |

## Version 2 (saved 2021-03-16)

Note of the change: Сдала вторую и третью

Last finish 2021-09-14 → 2021-09-16 (+2d).

Changed:

| ID | Task | Start | Finish | Duration | Total float |
| --- | --- | --- | --- | --- | --- |
| 8 | **Построение базы объектов** | 2021-03-01 → 2021-03-23 (+22d) | 2021-07-01 → 2021-07-22 (+21d) |  | 53d → 40d |
| 9 | Анализ и построение структуры базы объектов | 2021-03-01 → 2021-03-23 (+22d) | 2021-03-15 → 2021-04-05 (+21d) |  | 53d → 40d |
| 10 | Программирование средств обработки базы объектов | 2021-03-16 → 2021-04-06 (+21d) | 2021-04-05 → 2021-04-26 (+21d) |  | 53d → 40d |
| 11 | Наполнение базы объектов | 2021-04-06 → 2021-04-27 (+21d) | 2021-07-01 → 2021-07-22 (+21d) |  | 53d → 40d |
| 18 | Создание справочной системы | 2021-08-06 → 2021-08-17 (+11d) | 2021-08-19 → 2021-08-30 (+11d) |  | 18d → 13d |
| 22 | **Создание web – сайта и поддержка** |  | 2021-08-24 → 2021-08-26 (+2d) | 21d → 23d |  |
| 24 | Разработка дизайна сайта |  | 2021-08-03 → 2021-08-05 (+2d) | 1w → 1.4w |  |
| 25 | Наполнение сайта | 2021-08-04 → 2021-08-06 (+2d) | 2021-08-24 → 2021-08-26 (+2d) |  |  |
| 26 | Тестирование сайта | 2021-08-18 → 2021-08-20 (+2d) | 2021-09-14 → 2021-09-16 (+2d) |  |  |
| 27 | Сдача сайта в эксплуатацию | 2021-09-14 → 2021-09-16 (+2d) | 2021-09-14 → 2021-09-16 (+2d) |  |  |
