# LR1

How a schedule from MS Project changed from version to version. A marks actual dates.

## Version 1 (data date 2021-05-05, saved 2021-03-20, file LR4_z1_working_version.mpp)

Note of the change: сдала 4 лр

| ID | WBS | Task | Duration | Start | Finish | Predecessors | Complete | Total float | Constraint |
| --- | --- | --- | --- | --- | --- | --- | --- | --- | --- |
| 1 |  | Начало проекта | 0w | 2021-03-01 08:00 A | 2021-03-01 08:00 A |  | 100% |  |  |
| 2 | 2 | **Создание интерфейса** | 85.6d | 2021-03-01 08:00 A | 2021-07-02 13:48 | 1 | 81% | 0d |  |
| 3 | 2.1 | **Разработка дизайна интерфейса** | 29d | 2021-03-01 08:00 A | 2021-04-09 17:00 A |  | 100% |  |  |
| 4 |  | Разработка 2D графических элементов | 3w | 2021-03-01 08:00 A | 2021-03-23 11:00 A |  | 100% |  |  |
| 5 |  | Разработка 3D графических элементов | 2w | 2021-03-01 08:00 A | 2021-03-16 10:00 A | 4SS | 100% |  |  |
| 6 |  | Создание заставки | 3.67w | 2021-03-16 10:00 A | 2021-04-09 17:00 A | 5 | 100% |  |  |
| 7 |  | Программирование интерфейса | 2w | 2021-06-21 14:48 | 2021-07-02 13:48 | 3, 12 |  | 0d |  |
| 8 | 3 | **Построение базы объектов** | 56.7d | 2021-03-23 15:15 A | 2021-06-15 11:49 |  | 40% | 38.78d |  |
| 9 |  | Анализ и построение структуры базы объектов | 2w | 2021-03-23 15:15 A | 2021-04-12 08:49 A |  | 100% |  |  |
| 10 |  | Программирование средств обработки базы объектов | 3w | 2021-04-12 08:49 A | 2021-04-29 11:49 | 9 | 80% | 0d |  |
| 11 |  | Наполнение базы объектов | 6w | 2021-04-29 11:49 A | 2021-06-15 11:49 | 10 |  | 38.78d |  |
| 12 | 4 | **Создание ядра GIS** | 76.73d | 2021-03-01 08:00 A | 2021-06-21 14:48 |  | 39% | 0d |  |
| 13 |  | Анализ и проектирование ядра | 3.04w | 2021-03-01 08:00 A | 2021-03-23 13:36 A |  | 100% |  |  |
| 14 |  | Создание модели ядра | 2.17w | 2021-03-23 13:36 A | 2021-04-07 09:31 A | 13 | 100% |  |  |
| 15 |  | Тестирование модели ядра | 1.2w | 2021-04-07 09:31 A | 2021-04-15 09:31 A | 14 | 100% |  |  |
| 16 |  | Создание рабочей версии ядра | 10.01w | 2021-04-15 08:27 A | 2021-06-21 14:48 | 15 |  | 0d |  |
| 17 |  | Создание мультимедиа – наполнения | 6w | 2021-04-12 08:00 A | 2021-05-26 15:00 | 3 |  | 51.51d |  |
| 18 |  | Создание справочной системы | 2w | 2021-07-13 16:48 | 2021-07-28 09:48 | 7 |  | 8.03d |  |
| 19 | 7 | **Создание руководства пользователя** | 17.38d | 2021-06-18 13:48 | 2021-07-13 16:48 | 7FS-10d |  | 0d |  |
| 20 |  | Разработка дизайна руководства | 1w | 2021-06-18 13:48 | 2021-06-25 14:48 |  |  | 0d |  |
| 21 |  | Написание руководства пользователя | 3w | 2021-06-22 13:48 | 2021-07-13 16:48 | 20SS+2d |  | 0d |  |
| 22 | 8 | **Создание web – сайта и поддержка** | 23.62d | 2021-06-22 13:48 | 2021-07-26 09:48 |  |  | 0d |  |
| 23 |  | Разработка структуры сайта | 1d | 2021-06-22 13:48 | 2021-06-23 14:48 | 21SS |  | 0d |  |
| 24 |  | Разработка дизайна сайта | 1.43w | 2021-06-23 14:48 | 2021-07-02 15:48 | 23 |  | 0d |  |
| 25 |  | Наполнение сайта | 3w | 2021-07-02 15:48 | 2021-07-26 09:48 | 24 |  | 0d |  |
| 26 |  | Тестирование сайта | 3.33w | 2021-07-19 09:48 | 2021-08-09 10:05 | 22FS-1w |  | 0d |  |
| 27 |  | Сдача сайта в эксплуатацию | 0w | 2021-08-09 10:05 | 2021-08-09 10:05 | 26 |  | 0d |  |
| 28 | 11 | **Совещание** | 106.12d | 2021-03-03 08:00 A | 2021-08-04 09:00 |  | 43% | 3.14d |  |
| 29 |  | Совещание 1 | 1h | 2021-03-03 08:00 A | 2021-03-03 09:00 A |  | 100% |  | start no earlier than 2021-03-03 08:00 |
| 30 |  | Совещание 2 | 1h | 2021-03-10 08:00 A | 2021-03-10 09:00 A |  | 100% |  | start no earlier than 2021-03-10 08:00 |
| 31 |  | Совещание 3 | 1h | 2021-03-17 08:00 A | 2021-03-17 09:00 A |  | 100% |  | start no earlier than 2021-03-17 08:00 |
| 32 |  | Совещание 4 | 1h | 2021-03-24 08:00 A | 2021-03-24 09:00 A |  | 100% |  | start no earlier than 2021-03-24 08:00 |
| 33 |  | Совещание 5 | 1h | 2021-03-31 08:00 A | 2021-03-31 09:00 A |  | 100% |  | start no earlier than 2021-03-31 08:00 |
| 34 |  | Совещание 6 | 1h | 2021-04-07 08:00 A | 2021-04-07 09:00 A |  | 100% |  | start no earlier than 2021-04-07 08:00 |
| 35 |  | Совещание 7 | 1h | 2021-04-14 08:00 A | 2021-04-14 09:00 A |  | 100% |  | start no earlier than 2021-04-14 08:00 |
| 36 |  | Совещание 8 | 1h | 2021-04-21 08:00 A | 2021-04-21 09:00 A |  | 100% |  | start no earlier than 2021-04-21 08:00 |
| 37 |  | Совещание 9 | 1h | 2021-04-28 08:00 A | 2021-04-28 09:00 A |  | 100% |  | start no earlier than 2021-04-28 08:00 |
| 38 |  | Совещание 10 | 1h | 2021-05-05 08:00 A | 2021-05-05 09:00 A |  | 100% |  | start no earlier than 2021-05-05 08:00 |
| 39 |  | Совещание 11 | 1h | 2021-05-12 08:00 | 2021-05-12 09:00 |  |  | 62.14d | start no earlier than 2021-05-12 08:00 |
| 40 |  | Совещание 12 | 1h | 2021-05-19 08:00 | 2021-05-19 09:00 |  |  | 57.14d | start no earlier than 2021-05-19 08:00 |
| 41 |  | Совещание 13 | 1h | 2021-05-26 08:00 | 2021-05-26 09:00 |  |  | 52.14d | start no earlier than 2021-05-26 08:00 |
| 42 |  | Совещание 14 | 1h | 2021-06-02 08:00 | 2021-06-02 09:00 |  |  | 47.14d | start no earlier than 2021-06-02 08:00 |
| 43 |  | Совещание 15 | 1h | 2021-06-09 08:00 | 2021-06-09 09:00 |  |  | 42.14d | start no earlier than 2021-06-09 08:00 |
| 44 |  | Совещание 16 | 1h | 2021-06-16 08:00 | 2021-06-16 09:00 |  |  | 38.14d | start no earlier than 2021-06-16 08:00 |
| 45 |  | Совещание 17 | 1h | 2021-06-23 08:00 | 2021-06-23 09:00 |  |  | 33.14d | start no earlier than 2021-06-23 08:00 |
| 46 |  | Совещание 18 | 1h | 2021-06-30 08:00 | 2021-06-30 09:00 |  |  | 28.14d | start no earlier than 2021-06-30 08:00 |
| 47 |  | Совещание 19 | 1h | 2021-07-07 08:00 | 2021-07-07 09:00 |  |  | 23.14d | start no earlier than 2021-07-07 08:00 |
| 48 |  | Совещание 20 | 1h | 2021-07-14 08:00 | 2021-07-14 09:00 |  |  | 18.14d | start no earlier than 2021-07-14 08:00 |
| 49 |  | Совещание 21 | 1h | 2021-07-21 08:00 | 2021-07-21 09:00 |  |  | 13.14d | start no earlier than 2021-07-21 08:00 |
| 50 |  | Совещание 22 | 1h | 2021-07-28 08:00 | 2021-07-28 09:00 |  |  | 8.14d | start no earlier than 2021-07-28 08:00 |
| 51 |  | Совещание 23 | 1h | 2021-08-04 08:00 | 2021-08-04 09:00 |  |  | 3.14d | start no earlier than 2021-08-04 08:00 |

## Version 2 (data date 2021-05-05, saved 2021-03-20, file LR4_z1_dop_working_version.mpp)

Note of the change: сдала 4 лр

Last finish 2021-08-09 → 2021-07-30 (-10d).

Removed: 51 Совещание 23

Changed:

| ID | Task | Start | Finish | Duration | Complete | Total float | Other |
| --- | --- | --- | --- | --- | --- | --- | --- |
| 2 | **Создание интерфейса** |  | 2021-07-02 13:48 → 2021-06-29 16:00 (-3d) | 85.6d → 82.88d |  |  |  |
| 7 | Программирование интерфейса | 2021-06-21 14:48 → 2021-06-16 17:00 (-5d) | 2021-07-02 13:48 → 2021-06-29 16:00 (-3d) |  |  |  |  |
| 8 | **Построение базы объектов** |  | 2021-06-15 11:49 → 2021-05-31 11:49 (-15d) | 56.7d → 46.7d | 40% → 49% | 38.78d → 43.15d |  |
| 11 | Наполнение базы объектов | 2021-04-29 11:49 A → 2021-04-29 11:49 | 2021-06-15 11:49 → 2021-05-31 11:49 (-15d) | 6w → 4w |  | 38.78d → 43.15d |  |
| 12 | **Создание ядра GIS** |  | 2021-06-21 14:48 → 2021-06-16 17:00 (-5d) | 76.73d → 74d | 39% → 41% |  |  |
| 16 | Создание рабочей версии ядра | 2021-04-15 08:27 A → 2021-04-15 09:31 | 2021-06-21 14:48 → 2021-06-16 17:00 (-5d) | 10.01w → 9.16w |  |  | resources Программист #1; Ведущий программист; Программист #3; Программист #4 → Программист #1; Ведущий программист; Программист #3; Программист #4; Программист #5; Программист #6 |
| 18 | Создание справочной системы | 2021-07-13 16:48 → 2021-07-09 10:00 (-4d) | 2021-07-28 09:48 → 2021-07-23 12:00 (-5d) |  |  | 8.03d → 5.12d |  |
| 19 | **Создание руководства пользователя** | 2021-06-18 13:48 → 2021-06-15 16:00 (-3d) | 2021-07-13 16:48 → 2021-07-09 10:00 (-4d) |  |  |  |  |
| 20 | Разработка дизайна руководства | 2021-06-18 13:48 → 2021-06-15 16:00 (-3d) | 2021-06-25 14:48 → 2021-06-22 17:00 (-3d) |  |  |  |  |
| 21 | Написание руководства пользователя | 2021-06-22 13:48 → 2021-06-17 16:00 (-5d) | 2021-07-13 16:48 → 2021-07-09 10:00 (-4d) |  |  |  |  |
| 22 | **Создание web – сайта и поддержка** | 2021-06-22 13:48 → 2021-06-17 16:00 (-5d) | 2021-07-26 09:48 → 2021-07-21 11:00 (-5d) | 23.62d → 23.5d |  |  |  |
| 23 | Разработка структуры сайта | 2021-06-22 13:48 → 2021-06-17 16:00 (-5d) | 2021-06-23 14:48 → 2021-06-18 16:00 (-5d) |  |  |  |  |
| 24 | Разработка дизайна сайта | 2021-06-23 14:48 → 2021-06-18 16:00 (-5d) | 2021-07-02 15:48 → 2021-06-30 09:00 (-2d) |  |  |  |  |
| 25 | Наполнение сайта | 2021-07-02 15:48 → 2021-06-30 09:00 (-2d) | 2021-07-26 09:48 → 2021-07-21 11:00 (-5d) |  |  |  |  |
| 26 | Тестирование сайта | 2021-07-19 09:48 → 2021-07-14 11:00 (-5d) | 2021-08-09 10:05 → 2021-07-30 14:00 (-10d) | 3.33w → 2.73w |  |  | resources Ведущий программист; Программист #1; Программист #3; Программист #4 → Ведущий программист; Программист #1; Программист #3; Программист #4; Программист #5 |
| 27 | Сдача сайта в эксплуатацию | 2021-08-09 10:05 → 2021-07-30 14:00 (-10d) | 2021-08-09 10:05 → 2021-07-30 14:00 (-10d) |  |  |  |  |
| 28 | **Совещание** |  | 2021-08-04 09:00 → 2021-07-28 09:00 (-7d) | 106.12d → 101.12d | 43% → 45% | 3.14d → 2.5d |  |

## Version 3 (data date 2021-05-05, saved 2021-03-20, file LR4_z1_working_version.mpp)

Note of the change: сдала лр5

Last finish 2021-07-30 → 2021-08-09 (+10d).

Added:

| ID | Task | Duration | Start | Finish | Constraint |
| --- | --- | --- | --- | --- | --- |
| 51 | Совещание 23 | 1h | 2021-08-04 08:00 | 2021-08-04 09:00 | start no earlier than 2021-08-04 08:00 |

Changed:

| ID | Task | Start | Finish | Duration | Complete | Total float | Other |
| --- | --- | --- | --- | --- | --- | --- | --- |
| 2 | **Создание интерфейса** |  | 2021-06-29 16:00 → 2021-07-02 13:48 (+3d) | 82.88d → 85.6d |  |  |  |
| 7 | Программирование интерфейса | 2021-06-16 17:00 → 2021-06-21 14:48 (+5d) | 2021-06-29 16:00 → 2021-07-02 13:48 (+3d) |  |  |  |  |
| 8 | **Построение базы объектов** |  | 2021-05-31 11:49 → 2021-06-15 11:49 (+15d) | 46.7d → 56.7d | 49% → 40% | 43.15d → 38.78d |  |
| 11 | Наполнение базы объектов | 2021-04-29 11:49 A | 2021-05-31 11:49 → 2021-06-15 11:49 (+15d) | 4w → 6w |  | 43.15d → 38.78d |  |
| 12 | **Создание ядра GIS** |  | 2021-06-16 17:00 → 2021-06-21 14:48 (+5d) | 74d → 76.73d | 41% → 39% |  |  |
| 16 | Создание рабочей версии ядра | 2021-04-15 09:31 → 2021-04-15 08:27 A | 2021-06-16 17:00 → 2021-06-21 14:48 (+5d) | 9.16w → 10.01w |  |  | resources Программист #1; Ведущий программист; Программист #3; Программист #4; Программист #5; Программист #6 → Программист #1; Ведущий программист; Программист #3; Программист #4 |
| 18 | Создание справочной системы | 2021-07-09 10:00 → 2021-07-13 16:48 (+4d) | 2021-07-23 12:00 → 2021-07-28 09:48 (+5d) |  |  | 5.12d → 8.03d |  |
| 19 | **Создание руководства пользователя** | 2021-06-15 16:00 → 2021-06-18 13:48 (+3d) | 2021-07-09 10:00 → 2021-07-13 16:48 (+4d) |  |  |  |  |
| 20 | Разработка дизайна руководства | 2021-06-15 16:00 → 2021-06-18 13:48 (+3d) | 2021-06-22 17:00 → 2021-06-25 14:48 (+3d) |  |  |  |  |
| 21 | Написание руководства пользователя | 2021-06-17 16:00 → 2021-06-22 13:48 (+5d) | 2021-07-09 10:00 → 2021-07-13 16:48 (+4d) |  |  |  |  |
| 22 | **Создание web – сайта и поддержка** | 2021-06-17 16:00 → 2021-06-22 13:48 (+5d) | 2021-07-21 11:00 → 2021-07-26 09:48 (+5d) | 23.5d → 23.62d |  |  |  |
| 23 | Разработка структуры сайта | 2021-06-17 16:00 → 2021-06-22 13:48 (+5d) | 2021-06-18 16:00 → 2021-06-23 14:48 (+5d) |  |  |  |  |
| 24 | Разработка дизайна сайта | 2021-06-18 16:00 → 2021-06-23 14:48 (+5d) | 2021-06-30 09:00 → 2021-07-02 15:48 (+2d) |  |  |  |  |
| 25 | Наполнение сайта | 2021-06-30 09:00 → 2021-07-02 15:48 (+2d) | 2021-07-21 11:00 → 2021-07-26 09:48 (+5d) |  |  |  |  |
| 26 | Тестирование сайта | 2021-07-14 11:00 → 2021-07-19 09:48 (+5d) | 2021-07-30 14:00 → 2021-08-09 10:05 (+10d) | 2.73w → 3.33w |  |  | resources Ведущий программист; Программист #1; Программист #3; Программист #4; Программист #5 → Ведущий программист; Программист #1; Программист #3; Программист #4 |
| 27 | Сдача сайта в эксплуатацию | 2021-07-30 14:00 → 2021-08-09 10:05 (+10d) | 2021-07-30 14:00 → 2021-08-09 10:05 (+10d) |  |  |  |  |
| 28 | **Совещание** |  | 2021-07-28 09:00 → 2021-08-04 09:00 (+7d) | 101.12d → 106.12d | 45% → 43% | 2.5d → 3.14d |  |
